# Bright Source

How a schedule from MS Project changed from version to version. A marks actual dates.

## Version 1 (saved 2024-06-16, file Team 2_Bright Source updated-1.mpp)

| ID | WBS | Task | Duration | Start | Finish | Predecessors | Total float | Constraint |
| --- | --- | --- | --- | --- | --- | --- | --- | --- |
| 1 | 1 | **BrightSource Solar Project** | 1042d | 2024-06-12 | 2028-06-08 |  | 0d |  |
| 2 | 1.1 | **Initiation** | 136d | 2024-06-12 | 2024-12-18 |  | 0d |  |
| 3 | 1.1.1 | **Project Management** | 15d | 2024-06-12 | 2024-07-02 |  | 0d |  |
| 4 |  | Project Charter Development | 10d | 2024-06-12 | 2024-06-25 |  | 0d |  |
| 5 |  | Define project objectives | 5d | 2024-06-26 | 2024-07-02 | 4 | 1027d |  |
| 6 | 1.1.2 | **Stakeholders Identification** | 11d | 2024-06-26 | 2024-07-10 |  | 1021d |  |
| 7 |  | Identify stakeholders | 1d | 2024-06-26 | 2024-06-26 | 4 | 1021d |  |
| 8 |  | List all stakeholders | 5d | 2024-06-27 | 2024-07-03 | 7 | 1021d |  |
| 9 |  | Assess stakeholder impact | 5d | 2024-07-04 | 2024-07-10 | 8 | 1021d |  |
| 10 | 1.1.3 | **Project Scope Definition** | 40d | 2024-06-26 | 2024-08-20 |  | 0d |  |
| 11 |  | Develop scope statement | 10d | 2024-06-26 | 2024-07-09 | 4 | 0d | must start on 2024-06-26 |
| 12 |  | Create work breakdown structure | 10d | 2024-07-10 | 2024-07-23 | 11 | 0d |  |
| 13 | 1.1.3.3 | **Project Schedule Development** | 20d | 2024-07-24 | 2024-08-20 |  | 0d |  |
| 14 |  | Identify project tasks | 10d | 2024-07-24 | 2024-08-06 | 12 | 0d |  |
| 15 |  | Develop project timeline | 10d | 2024-08-07 | 2024-08-20 | 14 | 0d |  |
| 16 | 1.1.4 | **Team Formation and Resource Allocation** | 10d | 2024-08-14 | 2024-08-27 |  | 0d |  |
| 17 |  | Assign project roles | 5d | 2024-08-14 | 2024-08-20 | 15FS-5d | 0d |  |
| 18 |  | Allocate resources | 10d | 2024-08-14 | 2024-08-27 | 17FS-5d | 0d |  |
| 19 | 1.1.5 | **Risk Management Plan** | 20d | 2024-08-28 | 2024-09-24 |  | 0d |  |
| 20 |  | Identify potential risks | 10d | 2024-08-28 | 2024-09-10 | 18 | 0d |  |
| 21 |  | Develop risk mitigation strategies | 10d | 2024-09-11 | 2024-09-24 | 20 | 0d |  |
| 22 | 1.1.6 | **Budget Allocation and Financial Planning** | 60d | 2024-09-25 | 2024-12-17 |  | 0d |  |
| 23 |  | Estimate project costs | 10d | 2024-09-25 | 2024-10-08 | 21 | 0d |  |
| 24 |  | Develop budget plan | 10d | 2024-10-09 | 2024-10-22 | 23 | 0d |  |
| 25 |  | Secure funding from DOE and investors | 30d | 2024-11-06 | 2024-12-17 | 24FS+10d | 0d |  |
| 26 |  | Kickoff meeting | 1d | 2024-12-18 | 2024-12-18 | 25 | 0d |  |
| 27 | 1.2 | **Planning** | 208d | 2024-12-19 | 2025-10-06 |  | 0d |  |
| 28 | 1.2.1 | **Community Management** | 45d | 2024-12-19 | 2025-02-19 |  | 0d |  |
| 29 |  | Community Engagement Strategies | 15d | 2024-12-19 | 2025-01-08 | 26 | 0d | must start on 2024-12-19 |
| 30 |  | Plan townhall meetings | 5d | 2025-01-09 | 2025-01-15 | 29 | 0d |  |
| 31 |  | Develop communication plan | 10d | 2025-01-16 | 2025-01-29 | 30 | 0d |  |
| 32 |  | Create education and awareness program | 15d | 2025-01-30 | 2025-02-19 | 31 | 0d |  |
| 33 | 1.2.2 | **Community Monitoring and Reporting** | 11d | 2025-02-20 | 2025-03-06 |  | 0d |  |
| 34 |  | Set up monitoring systems | 10d | 2025-02-20 | 2025-03-05 | 32 | 0d |  |
| 35 |  | Report community feedback | 1d | 2025-03-06 | 2025-03-06 | 34 | 0d |  |
| 36 | 1.2.3 | **Social Responsibilities Initiatives** | 20d | 2025-03-07 | 2025-04-03 |  | 0d |  |
| 37 |  | Implement social programs | 20d | 2025-03-07 | 2025-04-03 | 35 | 0d |  |
| 38 |  | Monitor social impact | 0d | 2025-04-03 | 2025-04-03 | 37 | 0d |  |
| 39 | 1.2.4 | **Land Acquisition Communication Plan** | 2d | 2025-04-04 | 2025-04-07 |  | 0d |  |
| 40 |  | Communicate with concerned stakeholders | 2d | 2025-04-04 | 2025-04-07 | 38 | 0d |  |
| 41 | 1.2.5 | **Tortoise Rehabilitation** | 130d | 2025-04-08 | 2025-10-06 |  | 0d |  |
| 42 |  | Conduct biological assessments | 20d | 2025-04-08 | 2025-05-05 | 40 | 0d |  |
| 43 | 1.2.5.2 | **Monitoring** | 35d | 2025-05-06 | 2025-06-23 |  | 0d |  |
| 44 |  | Set up monitoring systems | 15d | 2025-05-06 | 2025-05-26 | 42 | 0d |  |
| 45 |  | Performance Tracking System | 10d | 2025-05-27 | 2025-06-09 | 44 | 0d |  |
| 46 |  | Implement tracking system | 10d | 2025-06-10 | 2025-06-23 | 45 | 0d |  |
| 47 | 1.2.5.3 | **Maintenance Plan** | 50d | 2025-06-24 | 2025-09-01 |  | 0d |  |
| 48 |  | Develop habitat monitoring plan | 20d | 2025-06-24 | 2025-07-21 | 46 | 0d |  |
| 49 |  | Implement vegetation management | 30d | 2025-07-22 | 2025-09-01 | 48 | 0d |  |
| 50 | 1.2.5.4 | **Address predator and threat management** | 25d | 2025-09-02 | 2025-10-06 |  | 0d |  |
| 51 |  | Restore wildlife habitats | 25d | 2025-09-02 | 2025-10-06 | 49 | 0d |  |
| 52 | 1.3 | **Execution** | 645d | 2025-10-07 | 2028-03-27 |  | 0d |  |
| 53 | 1.3.1 | **Land Acquisition** | 50d | 2025-10-07 | 2025-12-15 |  | 0d |  |
| 54 |  | US Fish & Wildlife Service Permission | 20d | 2025-10-07 | 2025-11-03 | 51 | 0d |  |
| 55 |  | Apply for permissions | 5d | 2025-11-04 | 2025-11-10 | 54 | 0d |  |
| 56 |  | Obtain approvals | 25d | 2025-11-11 | 2025-12-15 | 55 | 0d |  |
| 57 | 1.3.2 | **Mitigation Strategy Plan** | 20d | 2025-12-16 | 2026-01-12 |  | 0d |  |
| 58 |  | Develop mitigation strategies | 20d | 2025-12-16 | 2026-01-12 | 56 | 0d |  |
| 59 | 1.3.3 | **Land Survey** | 15d | 2026-01-13 | 2026-02-02 |  | 0d |  |
| 60 |  | Conduct land survey | 15d | 2026-01-13 | 2026-02-02 | 58 | 0d |  |
| 61 | 1.3.4 | **Legal Agreements and Contracts** | 30d | 2026-02-03 | 2026-03-16 |  | 0d |  |
| 62 |  | Draft legal documents | 20d | 2026-02-03 | 2026-03-02 | 60 | 0d |  |
| 63 |  | Finalize contracts | 10d | 2026-03-03 | 2026-03-16 | 62 | 0d |  |
| 64 | 1.3.5 | **Concentrated Solar Power Facility** | 240d | 2026-03-17 | 2027-02-15 |  | 0d |  |
| 65 | 1.3.5.1 | **System Design and Testing** | 60d | 2026-03-17 | 2026-06-08 |  | 0d |  |
| 66 |  | Design solar power system | 40d | 2026-03-17 | 2026-05-11 | 63 | 0d |  |
| 67 |  | Conduct system tests | 20d | 2026-05-12 | 2026-06-08 | 66 | 0d |  |
| 68 | 1.3.5.2 | **Site Selection** | 45d | 2026-06-09 | 2026-08-10 |  | 0d |  |
| 69 |  | Evaluate potential sites | 30d | 2026-06-09 | 2026-07-20 | 67 | 0d |  |
| 70 |  | Select optimal site | 15d | 2026-07-21 | 2026-08-10 | 69 | 0d |  |

| ID | WBS | Task | Duration | Start | Finish | Predecessors | Total float |
| --- | --- | --- | --- | --- | --- | --- | --- |
| 71 | 1.3.5.3 | **Biologist Hiring** | 15d | 2026-08-11 | 2026-08-31 |  | 0d |
| 72 |  | Recruit biologists | 15d | 2026-08-11 | 2026-08-31 | 70 | 0d |
| 73 | 1.3.5.4 | **Site Inspection** | 60d | 2026-09-01 | 2026-11-23 |  | 0d |
| 74 |  | Inspect selected site | 10d | 2026-09-01 | 2026-09-14 | 72 | 0d |
| 75 | 1.3.5.4.2 | **Acquiring Permits** | 30d | 2026-09-15 | 2026-10-26 |  | 0d |
| 76 |  | Obtain necessary permits | 30d | 2026-09-15 | 2026-10-26 | 74 | 0d |
| 77 | 1.3.5.4.3 | **Regulatory Compliance Plan** | 20d | 2026-10-27 | 2026-11-23 |  | 0d |
| 78 |  | Develop compliance strategy | 20d | 2026-10-27 | 2026-11-23 | 76 | 0d |
| 79 | 1.3.5.5 | **Software Controlled Facility** | 30d | 2026-11-24 | 2027-01-04 |  | 0d |
| 80 |  | Implement control software | 30d | 2026-11-24 | 2027-01-04 | 78 | 0d |
| 81 | 1.3.5.6 | **Material Procurement** | 30d | 2027-01-05 | 2027-02-15 |  | 0d |
| 82 |  | Purchase required materials | 30d | 2027-01-05 | 2027-02-15 | 80 | 0d |
| 83 | 1.3.6 | **Construction** | 290d | 2027-02-16 | 2028-03-27 |  | 0d |
| 84 |  | Mobilize Construction Crew | 10d | 2027-02-16 | 2027-03-01 | 82 | 0d |
| 85 |  | Construct Solar Towers | 60d | 2027-03-02 | 2027-05-24 | 84 | 0d |
| 86 |  | Install Heliostats | 60d | 2027-05-25 | 2027-08-16 | 85 | 0d |
| 87 |  | Install Steam Turbines | 45d | 2027-08-17 | 2027-10-18 | 86 | 0d |
| 88 |  | Build Electrical Substation | 40d | 2027-10-19 | 2027-12-13 | 87 | 0d |
| 89 |  | Connect Electrical Systems | 20d | 2027-12-14 | 2028-01-10 | 88 | 0d |
| 90 |  | Implement Dry-Cooling System | 30d | 2028-01-11 | 2028-02-21 | 89 | 0d |
| 91 |  | Conduct Safety Inspections | 10d | 2028-02-22 | 2028-03-06 | 90 | 0d |
| 92 |  | Perform Site Clean-Up | 15d | 2028-03-07 | 2028-03-27 | 91 | 0d |
| 93 |  | Construction Completed | 0d | 2028-03-27 | 2028-03-27 | 92 | 53d |
| 94 | 1.4 | **Monitoring and Controlling** | 528d | 2025-02-19 | 2027-03-01 |  | 333d |
| 95 | 1.4.1 | **Risk Management Plan** | 345d | 2025-11-03 | 2027-03-01 |  | 333d |
| 96 |  | Risk Identification and Analysis | 0d | 2025-11-03 | 2025-11-03 | 54 | 678d |
| 97 |  | Implement Risk Mitigation Strategies | 0d | 2026-05-11 | 2026-05-11 | 66 | 543d |
| 98 |  | Monitor and Control Risks | 0d | 2027-03-01 | 2027-03-01 | 84 | 333d |
| 99 | 1.4.2 | **Tortoise Rehabilitation Monitoring:** | 15d | 2025-05-05 | 2025-05-26 |  | 793d |
| 100 |  | Implement routine monitoring of tortoise health and activity | 0d | 2025-05-05 | 2025-05-05 | 42 | 808d |
| 101 |  | Monitor and Report on rehabilitation progress | 0d | 2025-05-26 | 2025-05-26 | 44 | 793d |
| 102 | 1.4.3 | **Community Monitoring and Reporting** | 10d | 2025-02-19 | 2025-03-05 |  | 851d |
| 103 |  | Conduct Regular Community Surveys | 0d | 2025-02-19 | 2025-02-19 | 32 | 861d |
| 104 |  | Report Monitoring Results | 0d | 2025-03-05 | 2025-03-05 | 34 | 851d |
| 105 | 1.5 | **Project Closure** | 53d | 2028-03-28 | 2028-06-08 |  | 0d |
| 106 | 1.5.1 | **Project Report** | 11d | 2028-03-28 | 2028-04-11 |  | 0d |
| 107 |  | Compile project results | 5d | 2028-03-28 | 2028-04-03 | 92 | 0d |
| 108 |  | Project Closure Checklist | 5d | 2028-04-04 | 2028-04-10 | 107 | 0d |
| 109 |  | Complete closure checklist | 1d | 2028-04-11 | 2028-04-11 | 108 | 0d |
| 110 | 1.5.2 | **Key Success Factors** | 5d | 2028-04-12 | 2028-04-18 |  | 0d |
| 111 |  | Identify success factors | 5d | 2028-04-12 | 2028-04-18 | 109 | 0d |
| 112 | 1.5.3 | **Areas for Improvement** | 10d | 2028-04-19 | 2028-05-02 |  | 0d |
| 113 |  | Document improvement areas | 10d | 2028-04-19 | 2028-05-02 | 111 | 0d |
| 114 | 1.5.4 | **Lessons Learned** | 10d | 2028-05-03 | 2028-05-16 |  | 17d |
| 115 |  | Record lessons learned | 10d | 2028-05-03 | 2028-05-16 | 113 | 17d |
| 116 | 1.5.5 | **Final Acceptance** | 10d | 2028-05-03 | 2028-05-16 |  | 0d |
| 117 |  | Obtain final acceptance | 10d | 2028-05-03 | 2028-05-16 | 113 | 0d |
| 118 | 1.5.6 | **Closure Meeting** | 1d | 2028-05-17 | 2028-05-17 |  | 0d |
| 119 |  | Conduct closure meeting | 1d | 2028-05-17 | 2028-05-17 | 117 | 0d |
| 120 | 1.5.7 | **Archiving Project Documentation** | 10d | 2028-05-18 | 2028-05-31 |  | 0d |
| 121 |  | Archive all documents | 10d | 2028-05-18 | 2028-05-31 | 119 | 0d |
| 122 | 1.5.8 | **Stakeholder Feedback and Satisfaction Evaluation** | 5d | 2028-06-01 | 2028-06-07 |  | 0d |
| 123 |  | Collect stakeholder feedback | 5d | 2028-06-01 | 2028-06-07 | 121 | 0d |
| 124 |  | Project Closed | 1d | 2028-06-08 | 2028-06-08 | 123 | 0d |

## Version 2 (data date 2024-06-19, saved 2024-06-19, file Team 2_ Resources and Cost & Schedule Baselines.mpp)

Last finish 2028-06-08 → 2028-06-22 (+14d). Complete tasks 0 → 6.

Added:

| ID | Task | Duration | Start | Finish |
| --- | --- | --- | --- | --- |
| 16 | Stakeholder Identification Completed | 0d | 2024-06-12 | 2024-06-12 |
| 37 | Community Engagement Program Launched | 0d | 2024-06-12 | 2024-06-12 |
| 66 | Land Acquisition and Permit Approval | 0d | 2024-06-12 | 2024-06-12 |
| 105 | Implementation of Tortoise Monitoring System | 0d | 2024-06-12 | 2024-06-12 |

Changed:

| ID | Task | Start | Finish | Duration | Complete | Total float | Predecessors | Other |
| --- | --- | --- | --- | --- | --- | --- | --- | --- |
| 1 | **BrightSource Solar Project** | 2024-06-12 → 2024-05-23 A (-20d) | 2028-06-08 → 2028-06-22 (+14d) | 1042d → 1066d | 0% → 3% |  |  | baseline start none → 2024-05-23; baseline finish none → 2028-06-22 |
| 2 | **Initiation** | 2024-06-12 → 2024-05-23 A (-20d) | 2024-12-18 → 2024-12-06 (-12d) | 136d → 142d | 0% → 23% | 0d → 924d |  | baseline start none → 2024-05-23; baseline finish none → 2024-12-06 |
| 3 | **Project Management** | 2024-06-12 → 2024-05-23 A (-20d) | 2024-07-02 → 2024-06-12 A (-20d) |  | 0% → 100% | 0d → none |  | baseline start none → 2024-05-23; baseline finish none → 2024-06-12 |
| 4 | Project Charter Development | 2024-06-12 → 2024-05-23 A (-20d) | 2024-06-25 → 2024-06-05 A (-20d) |  | 0% → 100% | 0d → none |  | baseline start none → 2024-05-23; baseline finish none → 2024-06-05 |
| 5 | Define project objectives | 2024-06-26 → 2024-06-06 A (-20d) | 2024-07-02 → 2024-06-12 A (-20d) |  | 0% → 100% | 1027d → none |  | baseline start none → 2024-06-06; baseline finish none → 2024-06-12 |
| 6 | **Stakeholders Identification** | 2024-06-26 → 2024-05-23 A (-34d) | 2024-07-10 → 2024-06-06 A (-34d) |  | 0% → 100% | 1021d → none |  | baseline start none → 2024-05-23; baseline finish none → 2024-06-06 |
| 7 | Identify stakeholders | 2024-06-26 → 2024-05-23 A (-34d) | 2024-06-26 → 2024-05-23 A (-34d) |  | 0% → 100% | 1021d → none | 4 → none | constraint none → start no earlier than 2024-05-23; resources none → Project Manager; baseline start none → 2024-05-23; baseline finish none → 2024-05-23 |
| 8 | List all stakeholders | 2024-06-27 → 2024-05-24 A (-34d) | 2024-07-03 → 2024-05-30 A (-34d) |  | 0% → 100% | 1021d → none |  | resources none → Project Manager; baseline start none → 2024-05-24; baseline finish none → 2024-05-30 |
| 9 | Assess stakeholder impact | 2024-07-04 → 2024-05-31 A (-34d) | 2024-07-10 → 2024-06-06 A (-34d) |  | 0% → 100% | 1021d → none |  | resources none → Business Analyst; Project Manager; baseline start none → 2024-05-31; baseline finish none → 2024-06-06 |
| 10 | **Project Scope Definition** | 2024-06-26 → 2024-06-07 A (-19d) | 2024-08-20 → 2024-08-01 (-19d) |  | 0% → 25% | 0d → 1015d |  | baseline start none → 2024-06-07; baseline finish none → 2024-08-01 |
| 11 | Develop scope statement | 2024-06-26 → 2024-06-07 A (-19d) | 2024-07-09 → 2024-06-20 A (-19d) |  | 0% → 100% | 0d → none |  | constraint must start on 2024-06-26 → must start on 2024-06-07; resources none → Project Manager; Business Analyst; baseline start none → 2024-06-07; baseline finish none → 2024-06-20 |
| 12 | Create work breakdown structure | 2024-07-10 → 2024-06-21 (-19d) | 2024-07-23 → 2024-07-04 (-19d) |  |  | 0d → 8d |  | resources none → Business Analyst; Project Manager; Team Lead; baseline start none → 2024-06-21; baseline finish none → 2024-07-04 |
| 13 | **Project Schedule Development** | 2024-07-24 → 2024-06-12 (-42d) | 2024-08-20 → 2024-08-01 (-19d) | 20d → 37d |  | 0d → 25d |  | baseline start none → 2024-06-12; baseline finish none → 2024-08-01 |
| 14 | Identify project tasks | 2024-07-24 → 2024-07-05 (-19d) | 2024-08-06 → 2024-07-18 (-19d) |  |  | 0d → 8d |  | resources none → Project Manager; Team Lead; baseline start none → 2024-07-05; baseline finish none → 2024-07-18 |
| 15 | Develop project timeline | 2024-08-07 → 2024-07-19 (-19d) | 2024-08-20 → 2024-08-01 (-19d) |  |  | 0d → 8d |  | resources none → Project Manager; Scheduler; baseline start none → 2024-07-19; baseline finish none → 2024-08-01 |
| 17 | **Team Formation and Resource Allocation** | 2024-08-14 → 2024-07-26 (-19d) | 2024-08-27 → 2024-08-15 (-12d) | 10d → 15d |  | 0d → 8d |  | baseline start none → 2024-07-26; baseline finish none → 2024-08-15 |
| 18 | Assign project roles | 2024-08-14 → 2024-07-26 (-19d) | 2024-08-20 → 2024-08-08 (-12d) | 5d → 10d |  | 0d → 8d |  | resources none → Project Manager; HR Manager; baseline start none → 2024-07-26; baseline finish none → 2024-08-08 |
| 19 | Allocate resources | 2024-08-14 → 2024-08-02 (-12d) | 2024-08-27 → 2024-08-15 (-12d) |  |  | 0d → 8d |  | resources none → HR Manager; Resource Manager; baseline start none → 2024-08-02; baseline finish none → 2024-08-15 |
| 20 | **Risk Management Plan** | 2024-08-28 → 2024-08-16 (-12d) | 2024-09-24 → 2024-09-12 (-12d) |  |  | 0d → 8d |  | baseline start none → 2024-08-16; baseline finish none → 2024-09-12 |
| 21 | Identify potential risks | 2024-08-28 → 2024-08-16 (-12d) | 2024-09-10 → 2024-08-29 (-12d) |  |  | 0d → 8d |  | resources none → Risk Manager; Project team; baseline start none → 2024-08-16; baseline finish none → 2024-08-29 |
| 22 | Develop risk mitigation strategies | 2024-09-11 → 2024-08-30 (-12d) | 2024-09-24 → 2024-09-12 (-12d) |  |  | 0d → 8d |  | resources none → Risk Manager; Project team; baseline start none → 2024-08-30; baseline finish none → 2024-09-12 |
| 23 | **Budget Allocation and Financial Planning** | 2024-09-25 → 2024-09-13 (-12d) | 2024-12-17 → 2024-12-05 (-12d) |  |  | 0d → 8d |  | baseline start none → 2024-09-13; baseline finish none → 2024-12-05 |
| 24 | Estimate project costs | 2024-09-25 → 2024-09-13 (-12d) | 2024-10-08 → 2024-09-26 (-12d) |  |  | 0d → 8d |  | resources none → Project Manager; Financial Analyst; baseline start none → 2024-09-13; baseline finish none → 2024-09-26 |
| 25 | Develop budget plan | 2024-10-09 → 2024-09-27 (-12d) | 2024-10-22 → 2024-10-10 (-12d) |  |  | 0d → 8d |  | resources none → Financial Analyst; Project Manager; baseline start none → 2024-09-27; baseline finish none → 2024-10-10 |
| 26 | Secure funding from DOE and investors | 2024-11-06 → 2024-10-25 (-12d) | 2024-12-17 → 2024-12-05 (-12d) |  |  | 0d → 8d |  | resources none → Financial Analyst; baseline start none → 2024-10-25; baseline finish none → 2024-12-05 |
| 27 | Kickoff meeting | 2024-12-18 → 2024-12-06 (-12d) | 2024-12-18 → 2024-12-06 (-12d) |  |  | 0d → 8d |  | resources none → Project team; Project Manager; baseline start none → 2024-12-06; baseline finish none → 2024-12-06 |
| 28 | **Planning** | 2024-12-19 → 2024-06-12 (-190d) |  | 208d → 344d |  | 0d → 136d |  | baseline start none → 2024-06-12; baseline finish none → 2025-10-06 |
| 29 | **Community Management** |  |  |  |  |  |  | baseline start none → 2024-12-19; baseline finish none → 2025-02-19 |
| 30 | Community Engagement Strategies |  |  |  |  |  |  | resources none → Community Manager; Communication Specialist; baseline start none → 2024-12-19; baseline finish none → 2025-01-08 |
| 31 | Plan townhall meetings |  |  |  |  |  |  | resources none → Community Manager; baseline start none → 2025-01-09; baseline finish none → 2025-01-15 |
| 32 | Develop communication plan |  |  |  |  |  |  | resources none → Communication Specialist; baseline start none → 2025-01-16; baseline finish none → 2025-01-29 |
| 33 | Create education and awareness program |  |  |  |  |  |  | resources none → Community Manager; Educators; baseline start none → 2025-01-30; baseline finish none → 2025-02-19 |
| 34 | **Community Monitoring and Reporting** | 2025-02-20 → 2024-06-12 (-253d) |  | 11d → 192d |  | 0d → 181d |  | baseline start none → 2024-06-12; baseline finish none → 2025-03-06 |
| 35 | Set up monitoring systems |  |  |  |  |  |  | resources none → IT Specialist; Financial Analyst; Community Manager; baseline start none → 2025-02-20; baseline finish none → 2025-03-05 |
| 36 | Report community feedback |  |  |  |  |  |  | resources none → Community Manager; baseline start none → 2025-03-06; baseline finish none → 2025-03-06 |
| 38 | **Social Responsibilities Initiatives** |  |  |  |  |  |  | baseline start none → 2025-03-07; baseline finish none → 2025-04-03 |
| 39 | Implement social programs |  |  |  |  |  |  | resources none → Community Manager; baseline start none → 2025-03-07; baseline finish none → 2025-04-03 |
| 40 | Monitor social impact |  |  |  |  |  |  | resources none → Data Analyst; Community Manager; baseline start none → 2025-04-03; baseline finish none → 2025-04-03 |
| 41 | **Land Acquisition Communication Plan** |  |  |  |  |  |  | baseline start none → 2025-04-04; baseline finish none → 2025-04-07 |
| 42 | Communicate with concerned stakeholders |  |  |  |  |  |  | resources none → Community Manager; baseline start none → 2025-04-04; baseline finish none → 2025-04-07 |
| 43 | **Tortoise Rehabilitation** |  |  |  |  |  |  | baseline start none → 2025-04-08; baseline finish none → 2025-10-06 |
| 44 | Conduct biological assessments |  |  |  |  |  |  | resources none → Environmental Biologist; Project Manager; baseline start none → 2025-04-08; baseline finish none → 2025-05-05 |
| 45 | **Monitoring** |  |  |  |  |  |  | baseline start none → 2025-05-06; baseline finish none → 2025-06-23 |
| 46 | Set up monitoring systems |  |  |  |  |  |  | resources none → Environmental Biologist; Data Analyst; baseline start none → 2025-05-06; baseline finish none → 2025-05-26 |
| 47 | Performance Tracking System |  |  |  |  |  |  | resources none → Data Analyst; baseline start none → 2025-05-27; baseline finish none → 2025-06-09 |
| 48 | Implement tracking system |  |  |  |  |  |  | resources none → Data Analyst; baseline start none → 2025-06-10; baseline finish none → 2025-06-23 |
| 49 | **Maintenance Plan** |  |  |  |  |  |  | baseline start none → 2025-06-24; baseline finish none → 2025-09-01 |
| 50 | Develop habitat monitoring plan |  |  |  |  |  |  | resources none → Environmental Biologist; baseline start none → 2025-06-24; baseline finish none → 2025-07-21 |
| 51 | Implement vegetation management |  |  |  |  |  |  | resources none → Environmental Biologist; baseline start none → 2025-07-22; baseline finish none → 2025-09-01 |
| 52 | **Address predator and threat management** |  |  |  |  |  |  | baseline start none → 2025-09-02; baseline finish none → 2025-10-06 |
| 53 | Restore wildlife habitats |  |  |  |  |  |  | resources none → Environmental Biologist; baseline start none → 2025-09-02; baseline finish none → 2025-10-06 |
| 54 | **Execution** | 2025-10-07 → 2024-06-12 (-482d) |  | 645d → 989d |  | 0d → 63d |  | baseline start none → 2024-06-12; baseline finish none → 2028-03-27 |
| 55 | **Land Acquisition** |  |  |  |  |  |  | baseline start none → 2025-10-07; baseline finish none → 2025-12-15 |
| 56 | US Fish & Wildlife Service Permission |  |  |  |  |  |  | resources none → Legal Advisor; Project Manager; baseline start none → 2025-10-07; baseline finish none → 2025-11-03 |
| 57 | Apply for permissions |  |  |  |  |  |  | resources none → Project Manager; Legal Advisor; baseline start none → 2025-11-04; baseline finish none → 2025-11-10 |
| 58 | Obtain approvals |  |  |  |  |  |  | resources none → Legal Advisor; baseline start none → 2025-11-11; baseline finish none → 2025-12-15 |
| 59 | **Mitigation Strategy Plan** |  |  |  |  |  |  | baseline start none → 2025-12-16; baseline finish none → 2026-01-12 |
| 60 | Develop mitigation strategies |  |  |  |  |  |  | resources none → Project Manager; Environmental Biologist; baseline start none → 2025-12-16; baseline finish none → 2026-01-12 |
| 61 | **Land Survey** |  |  |  |  |  |  | baseline start none → 2026-01-13; baseline finish none → 2026-02-02 |
| 62 | Conduct land survey |  |  |  |  |  |  | resources none → Surveyor; baseline start none → 2026-01-13; baseline finish none → 2026-02-02 |
| 63 | **Legal Agreements and Contracts** | 2026-02-03 → 2024-06-12 (-601d) |  | 30d → 459d |  | 0d → 429d |  | baseline start none → 2024-06-12; baseline finish none → 2026-03-16 |
| 64 | Draft legal documents |  |  |  |  |  |  | resources none → Legal Advisor; Contract Manager; baseline start none → 2026-02-03; baseline finish none → 2026-03-02 |
| 65 | Finalize contracts |  |  |  |  |  |  | resources none → Legal Advisor; Contract Manager; baseline start none → 2026-03-03; baseline finish none → 2026-03-16 |
| 67 | **Concentrated Solar Power Facility** |  |  |  |  |  |  | baseline start none → 2026-03-17; baseline finish none → 2027-02-15 |
| 68 | **System Design and Testing** |  |  |  |  |  |  | baseline start none → 2026-03-17; baseline finish none → 2026-06-08 |
| 69 | Design solar power system |  |  |  |  |  |  | resources none → Design Engineer; baseline start none → 2026-03-17; baseline finish none → 2026-05-11 |
| 70 | Conduct system tests |  |  |  |  |  |  | resources none → Testing Engineer; baseline start none → 2026-05-12; baseline finish none → 2026-06-08 |
| 71 | **Site Selection** |  |  |  |  |  |  | baseline start none → 2026-06-09; baseline finish none → 2026-08-10 |
| 72 | Evaluate potential sites |  |  |  |  |  |  | resources none → Site Analyst; Project Manager; baseline start none → 2026-06-09; baseline finish none → 2026-07-20 |
| 73 | Select optimal site |  |  |  |  |  |  | resources none → Site Analyst; Project Manager; baseline start none → 2026-07-21; baseline finish none → 2026-08-10 |

| ID | Task | Start | Finish | Duration | Total float | Other |
| --- | --- | --- | --- | --- | --- | --- |
| 74 | **Biologist Hiring** |  |  |  |  | baseline start none → 2026-08-11; baseline finish none → 2026-08-31 |
| 75 | Recruit biologists |  |  |  |  | resources none → HR Manager; Legal Advisor; baseline start none → 2026-08-11; baseline finish none → 2026-08-31 |
| 76 | **Site Inspection** |  |  |  |  | baseline start none → 2026-09-01; baseline finish none → 2026-11-23 |
| 77 | Inspect selected site |  |  |  |  | resources none → Inspector; baseline start none → 2026-09-01; baseline finish none → 2026-09-14 |
| 78 | **Acquiring Permits** |  |  |  |  | baseline start none → 2026-09-15; baseline finish none → 2026-10-26 |
| 79 | Obtain necessary permits |  |  |  |  | resources none → Legal Advisor; Inspector; baseline start none → 2026-09-15; baseline finish none → 2026-10-26 |
| 80 | **Regulatory Compliance Plan** |  |  |  |  | baseline start none → 2026-10-27; baseline finish none → 2026-11-23 |
| 81 | Develop compliance strategy |  |  |  |  | resources none → Compliance Officer; baseline start none → 2026-10-27; baseline finish none → 2026-11-23 |
| 82 | **Software Controlled Facility** |  |  |  |  | baseline start none → 2026-11-24; baseline finish none → 2027-01-04 |
| 83 | Implement control software |  |  |  |  | resources none → Software Engineer; baseline start none → 2026-11-24; baseline finish none → 2027-01-04 |
| 84 | **Material Procurement** |  |  |  |  | baseline start none → 2027-01-05; baseline finish none → 2027-02-15 |
| 85 | Purchase required materials |  |  |  |  | resources none → Procurement Officer; baseline start none → 2027-01-05; baseline finish none → 2027-02-15 |
| 86 | **Construction** |  |  |  |  | baseline start none → 2027-02-16; baseline finish none → 2028-03-27 |
| 87 | Mobilize Construction Crew |  |  |  |  | resources none → Construction Manager; HR Manager; baseline start none → 2027-02-16; baseline finish none → 2027-03-01 |
| 88 | Construct Solar Towers |  |  |  |  | resources none → Construction Manager; Engineers; baseline start none → 2027-03-02; baseline finish none → 2027-05-24 |
| 89 | Install Heliostats |  |  |  |  | resources none → Installation Crew; Engineers; baseline start none → 2027-05-25; baseline finish none → 2027-08-16 |
| 90 | Install Steam Turbines |  |  |  |  | resources none → Engineers; baseline start none → 2027-08-17; baseline finish none → 2027-10-18 |
| 91 | Build Electrical Substation |  |  |  |  | resources none → Electrical Engineer; Construction Manager; baseline start none → 2027-10-19; baseline finish none → 2027-12-13 |
| 92 | Connect Electrical Systems |  |  |  |  | resources none → Construction Manager; Electrical Engineer; baseline start none → 2027-12-14; baseline finish none → 2028-01-10 |
| 93 | Implement Dry-Cooling System |  |  |  |  | resources none → HVAC Engineer; Construction Manager; baseline start none → 2028-01-11; baseline finish none → 2028-02-21 |
| 94 | Conduct Safety Inspections |  |  |  |  | resources none → Safety Officer; Inspector; baseline start none → 2028-02-22; baseline finish none → 2028-03-06 |
| 95 | Perform Site Clean-Up |  |  |  |  | resources none → Site Crew; Environmental Biologist; baseline start none → 2028-03-07; baseline finish none → 2028-03-27 |
| 96 | Construction Completed |  |  |  | 53d → 63d | baseline start none → 2028-03-27; baseline finish none → 2028-03-27 |
| 97 | **Monitoring and Controlling** | 2025-02-19 → 2024-06-12 (-252d) |  | 528d → 709d | 333d → 343d | baseline start none → 2024-06-12; baseline finish none → 2027-03-01 |
| 98 | **Risk Management Plan** |  |  |  | 333d → 343d | baseline start none → 2025-11-03; baseline finish none → 2027-03-01 |
| 99 | Risk Identification and Analysis |  |  |  | 678d → 688d | resources none → Project Manager; Risk Manager; baseline start none → 2025-11-03; baseline finish none → 2025-11-03 |
| 100 | Implement Risk Mitigation Strategies |  |  |  | 543d → 553d | resources none → Risk Manager; Project Manager; baseline start none → 2026-05-11; baseline finish none → 2026-05-11 |
| 101 | Monitor and Control Risks |  |  |  | 333d → 343d | resources none → Project Manager; Risk Manager; baseline start none → 2027-03-01; baseline finish none → 2027-03-01 |
| 102 | **Tortoise Rehabilitation Monitoring:** | 2025-05-05 → 2024-06-12 (-327d) |  | 15d → 249d | 793d → 803d | baseline start none → 2024-06-12; baseline finish none → 2025-05-26 |
| 103 | Implement routine monitoring of tortoise health and activity |  |  |  | 808d → 818d | resources none → Environmental Biologist; Data Analyst; baseline start none → 2025-05-05; baseline finish none → 2025-05-05 |
| 104 | Monitor and Report on rehabilitation progress |  |  |  | 793d → 803d | resources none → Data Analyst; Environmental Biologist; baseline start none → 2025-05-26; baseline finish none → 2025-05-26 |
| 106 | **Community Monitoring and Reporting** |  |  |  | 851d → 861d | baseline start none → 2025-02-19; baseline finish none → 2025-03-05 |
| 107 | Conduct Regular Community Surveys |  |  |  | 861d → 871d | resources none → Community Manager; Data Analyst; baseline start none → 2025-02-19; baseline finish none → 2025-02-19 |
| 108 | Report Monitoring Results |  |  |  | 851d → 861d | resources none → Data Analyst; Community Manager; baseline start none → 2025-03-05; baseline finish none → 2025-03-05 |
| 109 | **Project Closure** |  | 2028-06-08 → 2028-06-22 (+14d) | 53d → 63d |  | baseline start none → 2028-03-28; baseline finish none → 2028-06-22 |
| 110 | **Project Report** |  |  |  |  | baseline start none → 2028-03-28; baseline finish none → 2028-04-11 |
| 111 | Compile project results |  |  |  |  | resources none → Data Analyst; Project Manager; baseline start none → 2028-03-28; baseline finish none → 2028-04-03 |
| 112 | Project Closure Checklist |  |  |  |  | resources none → Project Manager; Team Lead; baseline start none → 2028-04-04; baseline finish none → 2028-04-10 |
| 113 | Complete closure checklist |  |  |  |  | resources none → Team Lead; Project Manager; baseline start none → 2028-04-11; baseline finish none → 2028-04-11 |
| 114 | **Key Success Factors** |  |  |  |  | baseline start none → 2028-04-12; baseline finish none → 2028-04-18 |
| 115 | Identify success factors |  |  |  |  | resources none → Project Manager; Project team; baseline start none → 2028-04-12; baseline finish none → 2028-04-18 |
| 116 | **Areas for Improvement** |  |  |  |  | baseline start none → 2028-04-19; baseline finish none → 2028-05-02 |
| 117 | Document improvement areas |  |  |  |  | resources none → Project team; Project Manager; baseline start none → 2028-04-19; baseline finish none → 2028-05-02 |
| 118 | **Lessons Learned** |  | 2028-05-16 → 2028-05-31 (+15d) | 10d → 21d | 17d → 16d | baseline start none → 2028-05-03; baseline finish none → 2028-05-31 |
| 119 | Record lessons learned |  | 2028-05-16 → 2028-05-31 (+15d) | 10d → 21d | 17d → 16d | resources none → Project Manager; Project team; Team Lead; baseline start none → 2028-05-03; baseline finish none → 2028-05-31 |
| 120 | **Final Acceptance** |  |  |  |  | baseline start none → 2028-05-03; baseline finish none → 2028-05-16 |
| 121 | Obtain final acceptance |  |  |  |  | resources none → Project Manager; Team Lead; baseline start none → 2028-05-03; baseline finish none → 2028-05-16 |
| 122 | **Closure Meeting** |  | 2028-05-17 → 2028-05-31 (+14d) | 1d → 11d |  | baseline start none → 2028-05-17; baseline finish none → 2028-05-31 |
| 123 | Conduct closure meeting |  | 2028-05-17 → 2028-05-31 (+14d) | 1d → 2d |  | resources none → Team Lead; Project Manager; baseline start none → 2028-05-17; baseline finish none → 2028-05-31 |
| 124 | **Archiving Project Documentation** | 2028-05-18 → 2028-06-01 (+14d) | 2028-05-31 → 2028-06-14 (+14d) |  |  | baseline start none → 2028-06-01; baseline finish none → 2028-06-14 |
| 125 | Archive all documents | 2028-05-18 → 2028-06-01 (+14d) | 2028-05-31 → 2028-06-14 (+14d) |  |  | resources none → Document Control Specialist; Project Manager; baseline start none → 2028-06-01; baseline finish none → 2028-06-14 |
| 126 | **Stakeholder Feedback and Satisfaction Evaluation** | 2028-06-01 → 2028-06-15 (+14d) | 2028-06-07 → 2028-06-21 (+14d) |  |  | baseline start none → 2028-06-15; baseline finish none → 2028-06-21 |
| 127 | Collect stakeholder feedback | 2028-06-01 → 2028-06-15 (+14d) | 2028-06-07 → 2028-06-21 (+14d) |  |  | resources none → Business Analyst; Project Manager; baseline start none → 2028-06-15; baseline finish none → 2028-06-21 |
| 128 | Project Closed | 2028-06-08 → 2028-06-22 (+14d) | 2028-06-08 → 2028-06-22 (+14d) |  |  | baseline start none → 2028-06-22; baseline finish none → 2028-06-22 |
